# FinalProject2020 v2

Schedule from MS Project, 2020-03-02 to 2020-06-08.
Wellington Institute of Technology

## Calendars

- Standard: Mon-Fri 08:00-12:00, 13:00-17:00; Sat-Sun off.

## Resources

| Resource |
| --- |
| Cong |
| Michael |
| Client |
| Ian |
| Robert |
| ？ |

## Schedule

| ID | WBS | Task | Type | Duration | Start | Finish | Predecessors | Total slack | Constraint | Resources | Work |
| --- | --- | --- | --- | --- | --- | --- | --- | --- | --- | --- | --- |
| 1 | 1 | **Initiation** |  | 5d | 2020-03-02 08:00 | 2020-03-06 17:00 |  | 0d |  |  | 56h |
| 2 | 1.1 | Analyze the list of projects and find a suitable project |  | 1d | 2020-03-02 08:00 | 2020-03-02 17:00 |  | 0d | start no earlier than 2020-03-02 08:00 | Cong; Michael | 16h |
| 3 | 1.2 | System analysis(include risk analysis, technical analysis and feasibility analysis) |  | 1d | 2020-03-03 08:00 | 2020-03-03 17:00 | 2 | 0d |  | Michael | 8h |
| 4 | 1.3 | getting the frist version of the requirment form client |  | 2d | 2020-03-04 08:00 | 2020-03-05 17:00 | 3 | 0d |  | Client; Cong; Michael | 24h |
| 5 | 1.4 | Prepare the Project Bid document |  | 1d | 2020-03-06 08:00 | 2020-03-06 17:00 | 4 | 0d |  | Michael | 8h |
| 6 | 2 | **Plannig** |  | 10.5d | 2020-03-09 08:00 | 2020-03-23 12:00 | 1 | 0d |  |  | 160h |
| 7 | 2.1 | **requriment management** |  | 5d | 2020-03-09 08:00 | 2020-03-13 17:00 |  | 0d |  |  | 40h |
| 8 | 2.1.1 | collect requirments from client |  | 0.5d | 2020-03-09 08:00 | 2020-03-09 12:00 | 5 | 0d | as late as possible | Michael | 4h |
| 9 | 2.1.2 | make prototype |  | 4d | 2020-03-09 13:00 | 2020-03-13 12:00 | 8 | 0d |  | Michael | 32h |
| 10 | 2.1.3 | confirm the requirements |  | 0.5d | 2020-03-13 13:00 | 2020-03-13 17:00 | 9 | 0d |  | Michael | 4h |
| 11 | 2.2 | **Scope Management** |  | 3d | 2020-03-09 13:00 | 2020-03-12 12:00 |  | 0d |  |  | 24h |
| 12 | 2.2.1 | Scope statement |  | 1d | 2020-03-09 13:00 | 2020-03-10 12:00 | 8 | 0d |  | Cong | 8h |
| 13 | 2.2.2 | WBS and WBS dictionary |  | 2d | 2020-03-10 13:00 | 2020-03-12 12:00 | 12 | 0d |  | Cong | 16h |
| 14 | 2.3 | **schedule management** |  | 2d | 2020-03-12 13:00 | 2020-03-16 12:00 | 11 | 0d |  |  | 16h |
| 15 | 2.3.1 | Estimate |  | 4h | 2020-03-12 13:00 | 2020-03-12 17:00 | 13 | 0d |  | Cong | 4h |
| 16 | 2.3.2 | Make a detail schedule |  | 1.5d | 2020-03-13 08:00 | 2020-03-16 12:00 | 15 | 0d |  | Cong | 12h |
| 17 | 2.4 | **communication management** |  | 7d | 2020-03-09 08:00 | 2020-03-17 17:00 |  | 0d |  |  | 12h |
| 18 | 2.4.1 | Indentify and register stakeholders |  | 4h | 2020-03-09 08:00 | 2020-03-09 12:00 | 1 | 4.5d |  | Cong | 4h |
| 19 | 2.4.2 | make the communication plan |  | 4h | 2020-03-16 08:00 | 2020-03-16 12:00 | 18, 7 | 0d |  | Michael | 4h |
| 20 | 2.4.3 | Making training plan |  | 4h | 2020-03-17 13:00 | 2020-03-17 17:00 | 21 | 0d |  | Michael | 4h |
| 21 | 2.5 | **Human resource management** |  | 1d | 2020-03-16 13:00 | 2020-03-17 12:00 | 7 | 0d |  |  | 12h |
| 22 | 2.5.1 | Write CV |  | 4h | 2020-03-16 13:00 | 2020-03-16 17:00 | 19, 16 | 0d |  | Cong; Michael | 8h |
| 23 | 2.5.2 | Prepare the team agreement |  | 4h | 2020-03-17 08:00 | 2020-03-17 12:00 | 22 | 0d |  | Michael | 4h |
| 24 | 2.6 | **Prepare Proposal Document** |  | 4.5d | 2020-03-17 08:00 | 2020-03-23 12:00 |  | 0d |  |  | 56h |
| 25 | 2.6.1 | project background intrudction and management method description |  | 2.5d | 2020-03-18 08:00 | 2020-03-20 12:00 | 20 | 0d |  | Michael | 20h |
| 26 | 2.6.2 | write project mandate |  | 1d | 2020-03-20 13:00 | 2020-03-23 12:00 | 25 | 0d |  | Michael | 8h |
| 27 | 2.6.3 | Methodology and technical analysis |  | 2d | 2020-03-17 08:00 | 2020-03-18 17:00 | 22 | 2d |  | Cong | 16h |
| 28 | 2.6.4 | Meeting with advisor and getting approval form the turtor | milestone | 4h | 2020-03-23 08:00 | 2020-03-23 12:00 | 25, 27 | 0d | as late as possible | Cong; Robert; Michael | 12h |

| ID | WBS | Task | Type | Duration | Start | Finish | Predecessors | Total slack | Resources | Work |
| --- | --- | --- | --- | --- | --- | --- | --- | --- | --- | --- |
| 29 | 3 | **Execution** |  | 49.5d | 2020-03-23 13:00 | 2020-05-29 17:00 | 6 | 0d |  | 500h |
| 30 | 3.1 | **System analysis and desgin** |  | 6.5d | 2020-03-23 13:00 | 2020-03-31 17:00 |  | 0d |  | 64h |
| 31 | 3.1.1 | use case design |  | 4h | 2020-03-23 13:00 | 2020-03-23 17:00 | 6 | 0d | Cong | 4h |
| 32 | 3.1.2 | structure design |  | 4h | 2020-03-24 08:00 | 2020-03-24 12:00 | 31 | 0d | Cong | 4h |
| 33 | 3.1.3 | flow-process diagram |  | 4h | 2020-03-24 13:00 | 2020-03-24 17:00 | 32 | 5d | Cong | 4h |
| 34 | 3.1.4 | database design |  | 1d | 2020-03-24 13:00 | 2020-03-25 12:00 | 28, 32 | 0d | Michael | 8h |
| 35 | 3.1.5 | flow-process analysis |  | 1d | 2020-03-25 13:00 | 2020-03-26 12:00 | 34 | 0d | Michael | 8h |
| 36 | 3.1.6 | Write desgin document |  | 2d | 2020-03-26 13:00 | 2020-03-30 12:00 | 35 | 0d | Michael | 16h |
| 37 | 3.1.7 | Review the system desgin | milestone | 4h | 2020-03-30 13:00 | 2020-03-30 17:00 | 36 | 0d | Michael; Cong; Ian | 12h |
| 38 | 3.1.8 | Requirements Analysis -problems identified, possible solutions |  | 1d | 2020-03-31 08:00 | 2020-03-31 17:00 | 37 | 0d | Michael | 8h |
| 39 | 3.2 | **Develop** |  | 31d | 2020-04-01 08:00 | 2020-05-13 17:00 | 30 | 0d |  | 224h |
| 40 | 3.2.1 | build development environment |  | 2d | 2020-04-01 08:00 | 2020-04-02 17:00 | 37 | 0d | Cong | 16h |
| 41 | 3.2.2 | set up project structure |  | 2d | 2020-04-03 08:00 | 2020-04-06 17:00 | 40 | 0d | Cong | 16h |
| 42 | 3.2.3 | **Goods display** |  | 6d | 2020-04-07 08:00 | 2020-04-14 17:00 |  | 0d |  | 48h |
| 43 | 3.2.3.1 | Main page goods display |  | 2d | 2020-04-07 08:00 | 2020-04-08 17:00 | 41 | 0d | Cong | 16h |
| 44 | 3.2.3.2 | goods display by categroy |  | 1d | 2020-04-09 08:00 | 2020-04-09 17:00 | 43 | 0d | Cong | 8h |
| 45 | 3.2.3.3 | view the detail of the goods. |  | 1d | 2020-04-10 08:00 | 2020-04-10 17:00 | 44 | 0d | Cong | 8h |
| 46 | 3.2.3.4 | Auction |  | 2d | 2020-04-13 08:00 | 2020-04-14 17:00 | 45 | 0d | Cong | 16h |
| 47 | 3.2.4 | **User management** |  | 3d | 2020-04-15 08:00 | 2020-04-17 17:00 | 42 | 0d |  | 24h |
| 48 | 3.2.4.1 | login |  | 4h | 2020-04-15 08:00 | 2020-04-15 12:00 | 42 | 0d | Cong | 4h |
| 49 | 3.2.4.2 | logout |  | 4h | 2020-04-15 13:00 | 2020-04-15 17:00 | 48 | 0d | Cong | 4h |
| 50 | 3.2.4.3 | regiest |  | 4h | 2020-04-16 08:00 | 2020-04-16 12:00 | 49 | 0d | Cong | 4h |
| 51 | 3.2.4.4 | password recover |  | 4h | 2020-04-16 13:00 | 2020-04-16 17:00 | 50 | 0d | Cong | 4h |
| 52 | 3.2.4.5 | view the personal information |  | 4h | 2020-04-17 08:00 | 2020-04-17 12:00 | 51 | 0d | Cong | 4h |
| 53 | 3.2.4.6 | edit the personal information |  | 4h | 2020-04-17 13:00 | 2020-04-17 17:00 | 52 | 0d | Cong | 4h |

| ID | WBS | Task | Type | Duration | Start | Finish | Predecessors | Total slack | Resources | Work |
| --- | --- | --- | --- | --- | --- | --- | --- | --- | --- | --- |
| 54 | 3.2.5 | **Order management** |  | 2d | 2020-04-20 08:00 | 2020-04-21 17:00 | 47 | 0d |  | 16h |
| 55 | 3.2.5.1 | view the order |  | 1d | 2020-04-20 08:00 | 2020-04-20 17:00 | 46 | 0d | Cong | 8h |
| 56 | 3.2.5.2 | make appointments |  | 1d | 2020-04-21 08:00 | 2020-04-21 17:00 | 55 | 0d | Cong | 8h |
| 57 | 3.2.6 | **Cart management** |  | 2d | 2020-04-22 08:00 | 2020-04-23 17:00 |  | 0d |  | 16h |
| 58 | 3.2.6.1 | add items into the cart |  | 1d | 2020-04-22 08:00 | 2020-04-22 17:00 | 54 | 0d | Cong | 8h |
| 59 | 3.2.6.2 | delete item form the cart |  | 1d | 2020-04-23 08:00 | 2020-04-23 17:00 | 58 | 0d |  |  |
| 60 | 3.2.6.3 | view the cart. |  | 1d | 2020-04-23 08:00 | 2020-04-23 17:00 | 58 | 0d | Cong | 8h |
| 61 | 3.2.7 | **Goods managemet（admin）** |  | 3d | 2020-04-24 08:00 | 2020-04-28 17:00 |  | 0d |  | 24h |
| 62 | 3.2.7.1 | Display product list |  | 1d | 2020-04-24 08:00 | 2020-04-24 17:00 | 57 | 0d | Cong | 8h |
| 63 | 3.2.7.2 | Add a new commodity |  | 1d | 2020-04-27 08:00 | 2020-04-27 17:00 | 62 | 0d | Cong | 8h |
| 64 | 3.2.7.3 | Edit the commodity |  | 4h | 2020-04-28 08:00 | 2020-04-28 12:00 | 63 | 0d | Cong | 4h |
| 65 | 3.2.7.4 | Change the commodity state |  | 4h | 2020-04-28 13:00 | 2020-04-28 17:00 | 64 | 0d | Cong | 4h |
| 66 | 3.2.8 | **User management （admin）** |  | 2d | 2020-04-29 08:00 | 2020-04-30 17:00 |  | 0d |  | 16h |
| 67 | 3.2.8.1 | display user list |  | 1d | 2020-04-29 08:00 | 2020-04-29 17:00 | 61 | 0d | Cong | 8h |
| 68 | 3.2.8.2 | change the user's state |  | 4h | 2020-04-30 08:00 | 2020-04-30 12:00 | 67 | 0d | Cong | 4h |
| 69 | 3.2.8.3 | reset the password |  | 4h | 2020-04-30 13:00 | 2020-04-30 17:00 | 68 | 0d | Cong | 4h |
| 70 | 3.2.9 | **Generate orders automatically** |  | 2d | 2020-05-01 08:00 | 2020-05-04 17:00 |  | 0d |  | 16h |
| 71 | 3.2.9.1 | display order list |  | 1d | 2020-05-01 08:00 | 2020-05-01 17:00 | 66 | 0d | Cong | 8h |
| 72 | 3.2.9.2 | change the order list |  | 1d | 2020-05-04 08:00 | 2020-05-04 17:00 | 71 | 0d | Cong | 8h |
| 73 | 3.2.10 | **Page beautification** |  | 6d | 2020-05-05 08:00 | 2020-05-12 17:00 |  | 0d |  | 24h |
| 74 | 3.2.10.1 | Page beautification | milestone | 2d | 2020-05-05 08:00 | 2020-05-06 17:00 | 70 | 0d | Cong | 16h |
| 75 | 3.2.10.2 | About us Page |  | 4h | 2020-05-07 08:00 | 2020-05-07 12:00 | 74 | 0d | Cong | 4h |
| 76 | 3.2.10.3 | Contact us Page |  | 4h | 2020-05-07 13:00 | 2020-05-07 17:00 | 75 | 0d | Cong | 4h |
| 77 | 3.2.10.4 | Buffer time |  | 3d | 2020-05-08 08:00 | 2020-05-12 17:00 | 76 | 0d |  |  |
| 78 | 3.2.11 | Code review | milestone | 1d | 2020-05-13 08:00 | 2020-05-13 17:00 | 77 | 0d | Cong | 8h |

| ID | WBS | Task | Type | Duration | Start | Finish | Predecessors | Total slack | Free slack | Resources | Work |
| --- | --- | --- | --- | --- | --- | --- | --- | --- | --- | --- | --- |
| 79 | 3.3 | **Testing** |  | 40d | 2020-04-01 08:00 | 2020-05-26 17:00 |  | 0d |  |  | 136h |
| 80 | 3.3.1 | Prepare the testing enviroment |  | 1d | 2020-05-14 08:00 | 2020-05-14 17:00 | 39 | 0d |  | Michael; Cong | 16h |
| 81 | 3.3.2 | **integration testing** |  | 34d | 2020-04-01 08:00 | 2020-05-18 17:00 |  | 0d |  |  | 32h |
| 82 | 3.3.2.1 | write testing plan |  | 4h | 2020-04-01 08:00 | 2020-04-01 12:00 | 30 | 30.5d | 0d | Michael | 4h |
| 83 | 3.3.2.2 | Prepare test cases |  | 1d | 2020-04-01 13:00 | 2020-04-02 12:00 | 82 | 30.5d | 0d | Michael | 8h |
| 84 | 3.3.2.3 | execute integration testing |  | 1d | 2020-05-15 08:00 | 2020-05-15 17:00 | 83, 80 | 0d |  | Michael | 8h |
| 85 | 3.3.2.4 | fix problems |  | 1d | 2020-05-18 08:00 | 2020-05-18 17:00 | 84 | 0d |  | Cong | 8h |
| 86 | 3.3.2.5 | Write the intergration testing report |  | 4h | 2020-05-18 08:00 | 2020-05-18 12:00 | 84 | 0.5d |  | Michael | 4h |
| 87 | 3.3.3 | **System testing** |  | 34.5d | 2020-04-02 13:00 | 2020-05-20 17:00 |  | 0d |  |  | 32h |
| 88 | 3.3.3.1 | Prepare test cases |  | 1d | 2020-04-02 13:00 | 2020-04-03 12:00 | 83 | 31.5d | 0d | Michael | 8h |
| 89 | 3.3.3.2 | execute system testing |  | 1d | 2020-05-19 08:00 | 2020-05-19 17:00 | 88, 81 | 0d |  | Michael | 8h |
| 90 | 3.3.3.3 | fix problems |  | 1d | 2020-05-20 08:00 | 2020-05-20 17:00 | 89 | 0d |  | Cong | 8h |
| 91 | 3.3.3.4 | Write the intergration testing report |  | 1d | 2020-05-20 08:00 | 2020-05-20 17:00 | 89 | 0d |  | Michael | 8h |
| 92 | 3.3.4 | **Acceptance testing** |  | 8d | 2020-05-15 08:00 | 2020-05-26 17:00 |  | 0d |  |  | 56h |
| 93 | 3.3.4.1 | Prepare the testing enviroment |  | 1d | 2020-05-21 08:00 | 2020-05-21 17:00 | 87 | 0d |  | Client; Cong; Michael | 24h |
| 94 | 3.3.4.2 | Prepare test cases |  | 1d | 2020-05-15 08:00 | 2020-05-15 17:00 | 80 | 4d | 0d | Client | 8h |
| 95 | 3.3.4.3 | Perform Acceptance Testing |  | 1d | 2020-05-22 08:00 | 2020-05-22 17:00 | 94, 93 | 0d |  | Client | 8h |
| 96 | 3.3.4.4 | fix problems |  | 1d | 2020-05-25 08:00 | 2020-05-25 17:00 | 95 | 0d |  | Cong | 8h |
| 97 | 3.3.4.5 | Confirmed the problem has been fixed |  | 4h | 2020-05-26 08:00 | 2020-05-26 12:00 | 96 | 0d |  | Client | 4h |
| 98 | 3.3.4.6 | Write the acceptance testing report | milestone | 4h | 2020-05-26 13:00 | 2020-05-26 17:00 | 97 | 0d |  | Client | 4h |
| 99 | 3.4 | **Go-Live** |  | 38.5d | 2020-04-03 13:00 | 2020-05-27 17:00 |  | 1d |  |  | 40h |
| 100 | 3.4.1 | Go-live plan |  | 4h | 2020-04-03 13:00 | 2020-04-03 17:00 | 88 | 38d | 0d | Michael | 4h |
| 101 | 3.4.2 | Installation Manual |  | 1d | 2020-04-06 08:00 | 2020-04-06 17:00 | 100 | 38d |  | Michael | 8h |
| 102 | 3.4.3 | prepare the enviroment |  | 1d | 2020-05-18 08:00 | 2020-05-18 17:00 | 80, 94 | 6d |  | Client | 8h |
| 103 | 3.4.4 | go-live enviroment check |  | 4h | 2020-05-27 08:00 | 2020-05-27 12:00 | 102, 92 | 0d |  | Cong; Michael | 8h |
| 104 | 3.4.5 | Support go-live（implementing） | milestone | 4h | 2020-05-27 13:00 | 2020-05-27 17:00 | 103 | 0d |  | Client; Cong; Michael | 12h |

| ID | WBS | Task | Type | Duration | Start | Finish | Predecessors | Total slack | Free slack | Constraint | Resources | Work |
| --- | --- | --- | --- | --- | --- | --- | --- | --- | --- | --- | --- | --- |
| 105 | 3.5 | **maintenance** |  | 5d | 2020-05-25 08:00 | 2020-05-29 17:00 |  | 0d |  |  |  | 36h |
| 106 | 3.5.1 | Support |  | 1d | 2020-05-28 08:00 | 2020-05-28 17:00 | 104 | 0d |  |  | Cong; Michael | 16h |
| 107 | 3.5.2 | User guide book |  | 1d | 2020-05-25 08:00 | 2020-05-25 17:00 | 95 | 3.5d | 0d |  | Michael | 8h |
| 108 | 3.5.3 | Help documents |  | 4h | 2020-05-26 08:00 | 2020-05-26 12:00 | 107 | 3.5d |  |  | Michael | 4h |
| 109 | 3.5.4 | Wirte training material |  | 4h | 2020-05-29 08:00 | 2020-05-29 12:00 | 101, 106 | 0d |  |  | Michael | 4h |
| 110 | 3.5.5 | Training Clinet |  | 4h | 2020-05-29 13:00 | 2020-05-29 17:00 | 109 | 0d |  |  | Michael | 4h |
| 111 | 4 | **Monitoring** |  | 68d | 2020-03-04 08:00 | 2020-06-06 12:00 |  | 0d |  |  |  | 133h |
| 112 | 4.1 | **Team Meeting** |  | 68d | 2020-03-04 08:00 | 2020-06-06 09:00 |  | 0d |  |  |  | 28h |
| 113 | 4.1.1 | Team Meeting 1 | manual | 1h | 2020-03-04 08:00 | 2020-03-04 09:00 |  |  |  |  | Cong; Michael | 2h |
| 114 | 4.1.2 | Team Meeting 2 | manual | 1h | 2020-03-14 08:00 | 2020-03-14 09:00 |  |  |  | start no earlier than 2020-03-14 08:00 | Cong; Michael | 2h |
| 115 | 4.1.3 | Team Meeting 3 | manual | 1h | 2020-03-21 08:00 | 2020-03-21 09:00 |  |  |  | start no earlier than 2020-03-21 08:00 | Cong; Michael | 2h |
| 116 | 4.1.4 | Team Meeting 4 | manual | 1h | 2020-03-28 08:00 | 2020-03-28 09:00 |  |  |  | start no earlier than 2020-03-28 08:00 | Cong; Michael | 2h |
| 117 | 4.1.5 | Team Meeting 5 | manual | 1h | 2020-04-04 08:00 | 2020-04-04 09:00 |  |  |  | start no earlier than 2020-04-04 08:00 | Cong; Michael | 2h |
| 118 | 4.1.6 | Team Meeting 6 | manual | 1h | 2020-04-11 08:00 | 2020-04-11 09:00 |  |  |  | start no earlier than 2020-04-11 08:00 | Cong; Michael | 2h |
| 119 | 4.1.7 | Team Meeting 7 | manual | 1h | 2020-04-18 08:00 | 2020-04-18 09:00 |  |  |  | start no earlier than 2020-04-18 08:00 | Cong; Michael | 2h |
| 120 | 4.1.8 | Team Meeting 8 | manual | 1h | 2020-04-25 08:00 | 2020-04-25 09:00 |  |  |  | start no earlier than 2020-04-25 08:00 | Cong; Michael | 2h |
| 121 | 4.1.9 | Team Meeting 9 | manual | 1h | 2020-05-02 08:00 | 2020-05-02 09:00 |  |  |  | start no earlier than 2020-05-02 08:00 | Cong; Michael | 2h |
| 122 | 4.1.10 | Team Meeting 10 | manual | 1h | 2020-05-09 08:00 | 2020-05-09 09:00 |  |  |  | start no earlier than 2020-05-09 08:00 | Cong; Michael | 2h |
| 123 | 4.1.11 | Team Meeting 11 | manual | 1h | 2020-05-16 08:00 | 2020-05-16 09:00 |  |  |  | start no earlier than 2020-05-16 08:00 | Cong; Michael | 2h |
| 124 | 4.1.12 | Team Meeting 12 | manual | 1h | 2020-05-23 08:00 | 2020-05-23 09:00 |  |  |  | start no earlier than 2020-05-23 08:00 | Cong; Michael | 2h |
| 125 | 4.1.13 | Team Meeting 13 | manual | 1h | 2020-05-30 08:00 | 2020-05-30 09:00 |  |  |  | start no earlier than 2020-05-30 08:00 | Cong; Michael | 2h |
| 126 | 4.1.14 | Team Meeting 14 | manual | 1h | 2020-06-06 08:00 | 2020-06-06 09:00 |  |  |  | start no earlier than 2020-06-06 08:00 | Cong; Michael | 2h |
| 127 | 4.2 | **Advisor Meetings** |  | 65d | 2020-03-07 08:00 | 2020-06-06 09:00 |  | 0d |  |  |  | 42h |
| 128 | 4.2.1 | Advisor Meetings 1 | manual | 1h | 2020-03-07 08:00 | 2020-03-07 09:00 |  |  |  | start no earlier than 2020-03-07 08:00 | Cong; Michael; Ian | 3h |
| 129 | 4.2.2 | Advisor Meetings 2 | manual | 1h | 2020-03-14 08:00 | 2020-03-14 09:00 |  |  |  | start no earlier than 2020-03-14 08:00 | Cong; Michael; Ian | 3h |
| 130 | 4.2.3 | Advisor Meetings 3 | manual | 1h | 2020-03-21 08:00 | 2020-03-21 09:00 |  |  |  | start no earlier than 2020-03-21 08:00 | Cong; Michael; Ian | 3h |
| 131 | 4.2.4 | Advisor Meetings 4 | manual | 1h | 2020-03-28 08:00 | 2020-03-28 09:00 |  |  |  | start no earlier than 2020-03-28 08:00 | Cong; Michael; Ian | 3h |
| 132 | 4.2.5 | Advisor Meetings 5 | manual | 1h | 2020-04-04 08:00 | 2020-04-04 09:00 |  |  |  | start no earlier than 2020-04-04 08:00 | Cong; Michael; Ian | 3h |
| 133 | 4.2.6 | Advisor Meetings 6 | manual | 1h | 2020-04-11 08:00 | 2020-04-11 09:00 |  |  |  | start no earlier than 2020-04-11 08:00 | Cong; Michael; Ian | 3h |
| 134 | 4.2.7 | Advisor Meetings 7 | manual | 1h | 2020-04-18 08:00 | 2020-04-18 09:00 |  |  |  | start no earlier than 2020-04-18 08:00 | Cong; Michael; Ian | 3h |
| 135 | 4.2.8 | Advisor Meetings 8 | manual | 1h | 2020-04-25 08:00 | 2020-04-25 09:00 |  |  |  | start no earlier than 2020-04-25 08:00 | Cong; Michael; Ian | 3h |
| 136 | 4.2.9 | Advisor Meetings 9 | manual | 1h | 2020-05-02 08:00 | 2020-05-02 09:00 |  |  |  | start no earlier than 2020-05-02 08:00 | Cong; Michael; Ian | 3h |
| 137 | 4.2.10 | Advisor Meetings 10 | manual | 1h | 2020-05-09 08:00 | 2020-05-09 09:00 |  |  |  | start no earlier than 2020-05-09 08:00 | Cong; Michael; Ian | 3h |
| 138 | 4.2.11 | Advisor Meetings 11 | manual | 1h | 2020-05-16 08:00 | 2020-05-16 09:00 |  |  |  | start no earlier than 2020-05-16 08:00 | Cong; Michael; Ian | 3h |
| 139 | 4.2.12 | Advisor Meetings 12 | manual | 1h | 2020-05-23 08:00 | 2020-05-23 09:00 |  |  |  | start no earlier than 2020-05-23 08:00 | Cong; Michael; Ian | 3h |
| 140 | 4.2.13 | Advisor Meetings 13 | manual | 1h | 2020-05-30 08:00 | 2020-05-30 09:00 |  |  |  | start no earlier than 2020-05-30 08:00 | Cong; Michael; Ian | 3h |
| 141 | 4.2.14 | Advisor Meetings 14 | manual | 1h | 2020-06-06 08:00 | 2020-06-06 09:00 |  |  |  | start no earlier than 2020-06-06 08:00 | Cong; Michael; Ian | 3h |

| ID | WBS | Task | Type | Duration | Start | Finish | Predecessors | Total slack | Constraint | Resources | Work |
| --- | --- | --- | --- | --- | --- | --- | --- | --- | --- | --- | --- |
| 142 | 4.3 | **Customer Meetings** |  | 60d | 2020-03-07 08:00 | 2020-05-30 09:00 |  | 0d |  |  | 7h |
| 143 | 4.3.1 | Customer Meetings 1 | manual | 1h | 2020-03-07 08:00 | 2020-03-07 09:00 |  |  | start no earlier than 2020-03-07 08:00 | Michael | 1h |
| 144 | 4.3.2 | Customer Meetings 2 | manual | 1h | 2020-03-21 08:00 | 2020-03-21 09:00 |  |  | start no earlier than 2020-03-21 08:00 | Michael | 1h |
| 145 | 4.3.3 | Customer Meetings 3 | manual | 1h | 2020-04-04 08:00 | 2020-04-04 09:00 |  |  | start no earlier than 2020-04-04 08:00 | Michael | 1h |
| 146 | 4.3.4 | Customer Meetings 4 | manual | 1h | 2020-04-18 08:00 | 2020-04-18 09:00 |  |  | start no earlier than 2020-04-18 08:00 | Michael | 1h |
| 147 | 4.3.5 | Customer Meetings 5 | manual | 1h | 2020-05-02 08:00 | 2020-05-02 09:00 |  |  | start no earlier than 2020-05-02 08:00 | Michael | 1h |
| 148 | 4.3.6 | Customer Meetings 6 | manual | 1h | 2020-05-16 08:00 | 2020-05-16 09:00 |  |  | start no earlier than 2020-05-16 08:00 | Michael | 1h |
| 149 | 4.3.7 | Customer Meetings 7 | manual | 1h | 2020-05-30 08:00 | 2020-05-30 09:00 |  |  | start no earlier than 2020-05-30 08:00 | Michael | 1h |
| 150 | 4.4 | **Prepare the meeting agendas and write the mins** |  | 65d | 2020-03-07 08:00 | 2020-06-06 12:00 |  | 0d |  |  | 56h |
| 151 | 4.4.1 | Prepare the meeting agendas and write the mins 1 | manual | 4h | 2020-03-07 08:00 | 2020-03-07 12:00 |  |  | start no earlier than 2020-03-07 08:00 | Michael | 4h |
| 152 | 4.4.2 | Prepare the meeting agendas and write the mins 2 | manual | 4h | 2020-03-14 08:00 | 2020-03-14 12:00 |  |  | start no earlier than 2020-03-14 08:00 | Michael | 4h |
| 153 | 4.4.3 | Prepare the meeting agendas and write the mins 3 | manual | 4h | 2020-03-21 08:00 | 2020-03-21 12:00 |  |  | start no earlier than 2020-03-21 08:00 | Michael | 4h |
| 154 | 4.4.4 | Prepare the meeting agendas and write the mins 4 | manual | 4h | 2020-03-28 08:00 | 2020-03-28 12:00 |  |  | start no earlier than 2020-03-28 08:00 | Michael | 4h |
| 155 | 4.4.5 | Prepare the meeting agendas and write the mins 5 | manual | 4h | 2020-04-04 08:00 | 2020-04-04 12:00 |  |  | start no earlier than 2020-04-04 08:00 | Michael | 4h |
| 156 | 4.4.6 | Prepare the meeting agendas and write the mins 6 | manual | 4h | 2020-04-11 08:00 | 2020-04-11 12:00 |  |  | start no earlier than 2020-04-11 08:00 | Michael | 4h |
| 157 | 4.4.7 | Prepare the meeting agendas and write the mins 7 | manual | 4h | 2020-04-18 08:00 | 2020-04-18 12:00 |  |  | start no earlier than 2020-04-18 08:00 | Michael | 4h |
| 158 | 4.4.8 | Prepare the meeting agendas and write the mins 8 | manual | 4h | 2020-04-25 08:00 | 2020-04-25 12:00 |  |  | start no earlier than 2020-04-25 08:00 | Michael | 4h |
| 159 | 4.4.9 | Prepare the meeting agendas and write the mins 9 | manual | 4h | 2020-05-02 08:00 | 2020-05-02 12:00 |  |  | start no earlier than 2020-05-02 08:00 | Michael | 4h |
| 160 | 4.4.10 | Prepare the meeting agendas and write the mins 10 | manual | 4h | 2020-05-09 08:00 | 2020-05-09 12:00 |  |  | start no earlier than 2020-05-09 08:00 | Michael | 4h |
| 161 | 4.4.11 | Prepare the meeting agendas and write the mins 11 | manual | 4h | 2020-05-16 08:00 | 2020-05-16 12:00 |  |  | start no earlier than 2020-05-16 08:00 | Michael | 4h |
| 162 | 4.4.12 | Prepare the meeting agendas and write the mins 12 | manual | 4h | 2020-05-23 08:00 | 2020-05-23 12:00 |  |  | start no earlier than 2020-05-23 08:00 | Michael | 4h |
| 163 | 4.4.13 | Prepare the meeting agendas and write the mins 13 | manual | 4h | 2020-05-30 08:00 | 2020-05-30 12:00 |  |  | start no earlier than 2020-05-30 08:00 | Michael | 4h |
| 164 | 4.4.14 | Prepare the meeting agendas and write the mins 14 | manual | 4h | 2020-06-06 08:00 | 2020-06-06 12:00 |  |  | start no earlier than 2020-06-06 08:00 | Michael | 4h |
| 165 | 5 | **Closing** |  | 6d | 2020-06-01 08:00 | 2020-06-08 17:00 | 105 | 0d |  |  | 84h |
| 166 | 5.1 | Gaining stakeholder and customer acceptance |  | 1d | 2020-06-01 08:00 | 2020-06-01 17:00 | 105 | 0d |  | Client | 8h |
| 167 | 5.2 | Client feedback report |  | 1d | 2020-06-02 08:00 | 2020-06-02 17:00 | 166 | 4d |  | Client | 8h |
| 168 | 5.3 | Summary the lessons-learned and write a report（include closeout report） |  | 1d | 2020-06-02 08:00 | 2020-06-02 17:00 | 166 | 0d |  | Michael | 8h |
| 169 | 5.4 | Advisor Report |  | 4h | 2020-06-01 08:00 | 2020-06-01 12:00 |  | 5.5d |  | Ian | 4h |
| 170 | 5.5 | Archving project files |  | 4h | 2020-06-03 08:00 | 2020-06-03 12:00 | 168 | 0d |  | Michael | 4h |
| 171 | 5.6 | Submint the organizational process assets |  | 4h | 2020-06-03 13:00 | 2020-06-03 17:00 | 170 | 0d |  | Michael | 4h |
| 172 | 5.7 | perpare the final presentation |  | 2d | 2020-06-04 08:00 | 2020-06-05 17:00 | 171 | 0d |  | Michael; Cong | 32h |
| 173 | 5.8 | perpare the panel interview |  | 1d | 2020-06-08 08:00 | 2020-06-08 17:00 | 172 | 0d |  | Cong; Michael | 16h |
